Schedule from Planner, 2019-02-05 to 2019-08-12.

## Calendars

- Default: Mon-Fri 08:00-12:00, 13:00-17:00; Sat-Sun off.

## Resources

| Resource |
| --- |
| Johannes |
| Alan |
| Stephen |
| Steven Beard |
| Alex |

## Schedule

| ID | WBS | Task | Start | Finish | Predecessors | Complete | Constraint | Resources | Work |
| --- | --- | --- | --- | --- | --- | --- | --- | --- | --- |
| 1 | 1 | **Specification of verification software** | 2019-02-05 | 2019-06-12 |  |  |  |  | 24h |
| 2 | 1.1 | provide final specification | 2019-03-15 | 2019-03-15 |  |  | start no earlier than 2019-03-15 | Stephen | 8h |
| 3 | 1.2 | specify gearbox calibration function | 2019-06-12 | 2019-06-12 | 50 |  |  | Johannes | 8h |
| 4 | 1.3 | define parameters for pupil alignment test | 2019-02-05 | 2019-02-05 |  |  |  | Stephen | 8h |
| 5 | 2 | **Software:Sequencing Code (vfrig program)** | 2019-02-05 | 2019-08-12 |  |  |  | Johannes | 1096h |
| 6 | 2.1 | **Software:Hardware control** | 2019-03-12 | 2019-03-25 |  |  |  |  | 80h |
| 7 | 2.1.1 | provide hardware control functions for lamps | 2019-03-12 | 2019-03-25 |  |  | must start on 2019-03-12 | Alan | 80h |
| 8 | 2.2 | **write sequencing software according to specification** | 2019-02-05 | 2019-03-12 |  | 85% | must start on 2019-02-05 | Johannes | 208h |
| 9 | 2.2.1 | write datum and collision detection test | 2019-02-05 | 2019-02-07 |  |  |  |  | 24h |
| 10 | 2.2.2 | write task dependency resolution | 2019-02-08 | 2019-02-12 | 9 |  |  |  | 24h |
| 11 | 2.2.3 | write database access code | 2019-02-13 | 2019-02-15 | 10 |  |  |  | 24h |
| 12 | 2.2.4 | write datum repetability test | 2019-02-18 | 2019-02-20 | 11 |  |  |  | 24h |
| 13 | 2.2.5 | write positional repetability test | 2019-02-21 | 2019-02-26 | 12 |  |  |  | 32h |
| 14 | 2.2.6 | write positional verification test | 2019-02-27 | 2019-03-04 | 13 |  |  |  | 32h |
| 15 | 2.2.7 | write pupil alignment test | 2019-03-05 | 2019-03-07 | 14 |  |  |  | 24h |
| 16 | 2.2.8 | integrate image analysis code | 2019-03-08 | 2019-03-11 | 15 |  |  |  | 16h |
| 17 | 2.2.9 | tidy up code | 2019-03-12 | 2019-03-12 | 16 |  |  |  | 8h |
| 18 | 2.3 | Software:Sequencing Code:Add parameter evaluation | 2019-03-13 | 2019-03-15 | 8 |  |  | Johannes | 24h |
| 19 | 2.4 | Software: Change measurement of datum repeatability according to changed specification | 2019-03-18 | 2019-03-19 | 18 |  |  | Johannes | 16h |
| 20 | 2.5 | Software:Test task resolution and database storage | 2019-03-20 | 2019-03-21 | 19 |  |  |  | 16h |
| 21 | 2.6 | Software: Test & debug sequencing code with HW simulation | 2019-03-22 | 2019-03-28 | 20 |  |  | Johannes | 40h |
| 22 | 2.7 | **Software:Sequencing Code: Test w/ real hardware** | 2019-03-29 | 2019-04-04 | 21, 18, 8 |  |  | Johannes | 40h |
| 23 | 2.7.1 | Software:Sequencing Code:Test Collison Detection | 2019-03-29 | 2019-04-01 | 42 |  |  | Johannes | 16h |
| 24 | 2.7.2 | Software: Test rig self-test code | 2019-04-02 | 2019-04-04 | 23 |  |  | Johannes | 24h |

| ID | WBS | Task | Start | Finish | Predecessors | Complete | Constraint | Resources | Work |
| --- | --- | --- | --- | --- | --- | --- | --- | --- | --- |
| 25 | 2.8 | **Software:Image Analysis** | 2019-04-11 | 2019-08-08 |  |  |  |  | 64h |
| 26 | 2.8.1 | **Software: test image analysis with a batch of images** | 2019-04-11 | 2019-08-08 |  |  |  | Johannes | 64h |
| 27 | 2.8.1.1 | test metrology calibration image analysis | 2019-04-11 | 2019-04-12 | 49 |  |  |  | 16h |
| 28 | 2.8.1.2 | test positional repeatability image analysis | 2019-04-15 | 2019-04-16 | 27, 47 |  |  |  | 16h |
| 29 | 2.8.1.3 | test metrology height image analysis | 2019-04-17 | 2019-04-18 | 28, 48 |  |  |  | 16h |
| 30 | 2.8.1.4 | test pupil alignment image analysis | 2019-08-07 | 2019-08-08 | 51 | 10% |  |  | 16h |
| 31 | 2.9 | Software:Adapt to final specification | 2019-04-19 | 2019-05-02 | 29 |  |  |  | 80h |
| 32 | 2.10 | Software:Test pupil alignment | 2019-08-09 | 2019-08-12 | 30, 39, 51, 4 |  |  |  | 16h |
| 33 | 2.11 | **Software: implement pos-rep camera calibration** | 2019-05-03 | 2019-06-06 | 31 |  |  |  | 200h |
| 34 | 2.11.1 | research and solve pos-rep camera calibration function | 2019-05-03 | 2019-05-30 |  |  |  | Johannes | 160h |
| 35 | 2.11.2 | test pos-rep camera calibration function | 2019-05-31 | 2019-06-06 | 34 |  |  | Johannes | 40h |
| 36 | 2.12 | Software:Code gearbox calibration function | 2019-06-13 | 2019-06-19 | 29, 3 |  |  |  | 40h |
| 37 | 2.13 | Software: Test gearbox calibration function w/ real data | 2019-06-20 | 2019-06-26 | 36 |  |  |  | 40h |
| 38 | 2.14 | Software:Test and complete positional verification | 2019-06-27 | 2019-07-02 | 37 |  |  |  | 32h |
| 39 | 2.15 | **Software: implement pupil alignment camera calibration** | 2019-02-05 | 2019-03-11 |  |  |  |  | 200h |
| 40 | 2.15.1 | research and possibly solve pup-algn camera calibration function | 2019-02-05 | 2019-03-11 |  |  |  | Alex | 200h |
| 41 | 3 | **Provide test hardware** | 2019-03-21 | 2019-08-05 |  |  |  |  | 32h |
| 42 | 3.1 | provide wire set-up to test collision detection with real FPUs | 2019-03-21 | 2019-03-22 |  |  | start no earlier than 2019-03-21 | Stephen | 16h |
| 43 | 3.2 | provide an initial batch of FPUs to test image analysis functions | 2019-03-25 | 2019-03-25 | 42 |  |  | Stephen | 8h |
| 44 | 3.3 | provide FPUs with fibres and lenses for pupil alignment tests | 2019-08-05 | 2019-08-05 |  |  | start no earlier than 2019-08-05 | Stephen | 8h |
| 45 | 4 | **generate test data for software engineering and testing** | 2019-04-05 | 2019-08-06 | 22, 6 |  |  | Johannes | 64h |
| 46 | 4.1 | capture images for datum repeatability tests | 2019-04-05 | 2019-04-05 |  |  |  |  | 8h |
| 47 | 4.2 | capture images for positional repeatability tests | 2019-04-08 | 2019-04-08 | 46 |  |  |  | 8h |
| 48 | 4.3 | capture images for metrology height tests | 2019-04-09 | 2019-04-09 | 47 |  |  |  | 8h |
| 49 | 4.4 | capture images for metrology calibration test | 2019-04-10 | 2019-04-10 | 48 | 27% |  |  | 8h |
| 50 | 4.5 | get test data for gearbox calibration | 2019-06-07 | 2019-06-11 | 33, 28 |  |  |  | 24h |
| 51 | 4.6 | capture images for pupil alignment tests | 2019-08-06 | 2019-08-06 | 44 |  |  |  | 8h |
